# K15T1-Team11-MRBS-Schedule-ver0.1

Schedule from MS Project, 2012-05-21 to 2012-08-10, A marks actual dates.

## Calendars

- Standard: Mon-Fri 08:00-12:00, 13:00-17:00; Sat-Sun off. Exceptions (off unless hours are given): 2012-06-09 to 2012-06-10 08:00-12:00, 13:00-17:00, 2012-06-16 08:00-12:00, 13:00-17:00.

## Resources

| Resource |
| --- |
| Van Le |
| Huyen Le |
| Son Dang |
| Tam Do |
| Tin Nguyen |
| Toan Dang |

## Schedule

| ID | WBS | Task | Duration | Start | Finish | Predecessors | Total slack | Free slack | Resources | Work |
| --- | --- | --- | --- | --- | --- | --- | --- | --- | --- | --- |
| 1 | 1 | **MRBS Project** | 60d? | 2012-05-21 08:00 | 2012-08-10 17:00 |  | 0d |  | Van Le; Huyen Le; Son Dang; Tam Do; Tin Nguyen; Toan Dang | 3024h |
| 2 | 1.1 | **Project Management** | 4d | 2012-06-04 08:00 | 2012-06-07 17:00 |  |  |  | Van Le | 32h |
| 3 | 1.1.1 | **Plan MRBS project** | 5d | 2012-06-04 08:00 | 2012-06-08 17:00 |  |  |  | Van Le | 40h |
| 4 | 1.1.1.1 | **Scope** | 4d? | 2012-06-04 08:00 | 2012-06-07 17:00 |  | 0d | 46d | Van Le | 64h |
| 5 | 1.1.1.1.1 | Determine project scope | 1d? | 2012-06-04 08:00 | 2012-06-04 17:00 |  | 0d |  | Van Le | 8h |
| 6 | 1.1.1.1.2 | Define preliminary resources | 1d? | 2012-06-06 08:00 | 2012-06-06 17:00 | 5 | 0d |  | Van Le | 8h |
| 7 | 1.1.1.1.3 | Scope complete | 1d? | 2012-06-07 08:00 | 2012-06-07 17:00 | 6 | 0d | 46d | Van Le | 8h |
| 8 | 1.1.1.2 | **Goal & Objective of MRBS Project** | 1d | 2012-06-04 08:00 | 2012-06-04 17:00 |  | 0d |  |  |  |
| 9 | 1.1.1.2.1 | Business goal & objective of MRBS project | 1d? | 2012-06-04 08:00 | 2012-06-04 17:00 | 7 | 0d |  | Van Le | 8h |
| 10 | 1.1.1.3 | Plan comunication | 1d? | 2012-06-04 08:00 | 2012-06-04 17:00 |  | 0d |  |  |  |
| 11 | 1.1.1.4 | **Making measurment plan** | 1d | 2012-06-04 08:00 | 2012-06-04 17:00 |  | 0d |  |  |  |
| 12 | 1.1.1.4.1 | Define software measurement process | 1d? | 2012-06-04 08:00 | 2012-06-04 17:00 |  | 0d |  | Van Le | 8h |
| 13 | 1.1.1.4.2 | Determine method & technical | 1d? | 2012-06-04 08:00 | 2012-06-04 17:00 |  | 0d |  |  |  |
| 14 | 1.1.1.4.3 | Estimate for overall project | 1d? | 2012-06-04 08:00 | 2012-06-04 17:00 |  | 0d |  |  |  |
| 15 | 1.1.1.4.4 | continous | 1d? | 2012-06-04 08:00 | 2012-06-04 17:00 |  | 0d |  |  |  |
| 16 | 1.1.1.5 | **Change Management** | 1d | 2012-06-04 08:00 | 2012-06-04 17:00 |  | 0d |  |  |  |
| 17 | 1.1.1.5.1 | continous | 1d? | 2012-06-04 08:00 | 2012-06-04 17:00 |  | 0d |  |  |  |
| 18 | 1.1.1.5.2 | continous | 1d? | 2012-06-04 08:00 | 2012-06-04 17:00 |  | 0d |  |  |  |
| 19 | 1.1.1.6 | **Risk Management** | 1d | 2012-06-04 08:00 | 2012-06-04 17:00 |  | 0d |  |  |  |
| 20 | 1.1.1.6.1 | continous | 1d? | 2012-06-04 08:00 | 2012-06-04 17:00 |  | 0d |  |  |  |
| 21 | 1.1.1.6.2 | continous | 1d? | 2012-06-04 08:00 | 2012-06-04 17:00 |  | 0d |  |  |  |
| 22 | 1.1.2 | **Monitor & Control MRBS Project (Track project)** | 1d | 2012-06-04 08:00 | 2012-06-04 17:00 |  |  |  |  |  |
| 23 | 1.1.2.1 | Determine methodology for Project | 1d? | 2012-06-04 08:00 | 2012-06-04 17:00 |  | 0d |  |  |  |
| 24 | 1.1.2.2 | Determine method & technical | 1d? | 2012-06-04 08:00 | 2012-06-04 17:00 |  | 0d |  |  |  |
| 25 | 1.1.2.3 | Configuration management | 1d? | 2012-06-04 08:00 | 2012-06-04 17:00 |  | 0d |  |  |  |
| 26 | 1.1.2.4 | Prepare status report | 1d? | 2012-06-04 08:00 | 2012-06-04 17:00 |  | 0d |  |  |  |
| 27 | 1.1.2.5 | Collect/ analyze project metrics | 1d? | 2012-06-04 08:00 | 2012-06-04 17:00 |  | 0d |  |  |  |

Notes:
- 2: It isn't complete

| ID | WBS | Task | Type | Duration | Start | Finish | Predecessors | Complete | Total slack | Constraint | Resources | Work | Actual work |
| --- | --- | --- | --- | --- | --- | --- | --- | --- | --- | --- | --- | --- | --- |
| 28 | 1.1.2.6 | **Updade all document** |  | 1d | 2012-06-04 08:00 | 2012-06-04 17:00 |  |  | 0d |  |  |  |  |
| 29 | 1.1.2.6.1 | Update project plan |  | 1d? | 2012-06-04 08:00 | 2012-06-04 17:00 |  |  | 0d |  |  |  |  |
| 30 | 1.1.2.6.2 | Update schedule |  | 1d? | 2012-06-04 08:00 | 2012-06-04 17:00 |  |  | 0d |  |  |  |  |
| 31 | 1.1.2.6.3 | continuous |  | 1d? | 2012-06-04 08:00 | 2012-06-04 17:00 |  |  | 0d |  |  |  |  |
| 32 | 1.1.2.7 | continuous |  | 1d? | 2012-06-04 08:00 | 2012-06-04 17:00 |  |  | 0d |  |  |  |  |
| 33 | 1.1.3 | **Make detail schedule** |  | 1d | 2012-06-04 08:00 | 2012-06-04 17:00 |  |  | 0d |  |  |  |  |
| 34 | 1.1.3.1 | Assign work for team |  | 1d? | 2012-06-04 08:00 | 2012-06-04 17:00 |  |  | 0d |  |  |  |  |
| 35 | 1.1.3.2 | Tracking project schedule |  | 60d? | 2012-05-24 08:00 | 2012-08-10 17:00 |  |  | 0d | finish no earlier than 2012-08-10 17:00 |  |  |  |
| 36 | 1.1.3.3 | Update project schedule |  | 60d? | 2012-05-21 08:00 | 2012-08-07 17:00 |  |  | 0d | start no earlier than 2012-05-21 08:00 |  |  |  |
| 37 | 1.2 | **Requirement** |  | 22d | 2012-05-21 08:00 | 2012-06-16 17:00 |  |  |  |  |  |  |  |
| 38 | 1.2.1 | **Plan requirement management** |  | 1d | 2012-06-11 08:00 | 2012-06-16 17:00 |  |  | 0d |  |  |  |  |
| 39 | 1.2.1.1 | Define template of Requirement Management Plan |  | 0.12d? | 2012-06-11 08:00 | 2012-06-11 09:00 |  |  | 0d | start no earlier than 2012-06-11 08:00 | Van Le | 1h |  |
| 40 | 1.2.1.2 | Define role and responsibilities |  | 0.12d? | 2012-06-11 09:00 | 2012-06-11 10:00 | 39 |  | 0d | start no earlier than 2012-06-11 08:00 | Van Le | 1h |  |
| 41 | 1.2.1.3 | Define requirements processes |  | 0.38d? | 2012-06-11 10:00 | 2012-06-11 14:00 | 40 |  | 0d | start no earlier than 2012-06-11 08:00 | Van Le | 3h |  |
| 42 | 1.2.1.4 | Define requirement documentation and organization |  | 0.06d? | 2012-06-11 14:00 | 2012-06-11 14:30 | 41 |  | 0d | start no earlier than 2012-06-11 08:00 | Van Le | 0.5h |  |
| 43 | 1.2.1.5 | Measure |  | 0.12d? | 2012-06-11 14:30 | 2012-06-11 15:30 | 42 |  | 0d | start no earlier than 2012-06-11 08:00 | Van Le | 1h |  |
| 44 | 1.2.2 | Update Requirement management plan |  | 6d? | 2012-06-11 08:00 | 2012-06-16 17:00 |  |  | 0d | start no earlier than 2012-06-11 08:00 |  | 3h |  |
| 45 | 1.2.3 | **Make concept of operation** |  | 6d | 2012-06-07 08:00 | 2012-06-12 17:00 |  |  |  |  |  |  |  |
| 46 | 1.2.3.1 | Define concept of operation template | milestone | 0d | 2012-06-07 08:00 A | 2012-06-07 08:00 A | 43 | 100% |  |  | Van Le |  |  |
| 47 | 1.2.3.2 | **Define system requirement** |  | 2d | 2012-06-07 08:00 | 2012-06-08 17:00 |  |  |  |  |  |  |  |
| 48 | 1.2.3.2.1 | **Define process working (business process) of current system** |  | 2d | 2012-06-07 08:00 | 2012-06-08 17:00 |  |  |  |  |  |  |  |
| 49 | 1.2.3.2.1.1 | Discuss overall business process |  | 0.29d | 2012-06-07 08:00 A | 2012-06-07 10:17 A |  | 100% |  | finish no earlier than 2012-06-07 17:00 | Huyen Le; Son Dang; Tam Do; Tin Nguyen; Toan Dang; Van Le | 2h | 2h |
| 50 | 1.2.3.2.1.2 | Define & documentation business process |  | 1.17d | 2012-06-07 08:00 A | 2012-06-08 09:20 A | 49, 46 | 100% |  |  | Huyen Le | 4h | 4h |
| 51 | 1.2.3.2.1.3 | Review business process and description business process |  | 0.19d? | 2012-06-07 08:00 A | 2012-06-07 09:30 A | 50 | 100% |  |  | Son Dang; Tin Nguyen | 3h | 3h |

Notes:
- 37: - Main day is 6 hrs / - Buffer 5 main day (30hrs)

| ID | WBS | Task | Type | Duration | Start | Finish | Predecessors | Complete | Remaining | Total slack | Free slack | Constraint | Resources | Work | Actual work |
| --- | --- | --- | --- | --- | --- | --- | --- | --- | --- | --- | --- | --- | --- | --- | --- |
| 52 | 1.2.3.2.2 | **Define current infrastructure** |  | 1d | 2012-06-07 08:00 | 2012-06-07 17:00 |  |  |  | 0d |  |  |  |  |  |
| 53 | 1.2.3.2.2.1 | Define preliminary hardware enviroment |  | 0.06d? | 2012-06-07 08:00 A | 2012-06-07 08:30 A |  | 100% |  |  |  | start no earlier than 2012-06-07 08:00 | Tin Nguyen | 0.5h | 0.5h |
| 54 | 1.2.3.2.2.2 | Define preliminary software enviroment |  | 0.06d? | 2012-06-07 08:00 A | 2012-06-07 08:30 A |  | 100% |  |  |  | start no earlier than 2012-06-07 08:00 | Tin Nguyen | 0.5h | 0.5h |
| 55 | 1.2.3.2.2.3 | Define prelimininary communications environment |  | 0.06d? | 2012-06-07 08:00 A | 2012-06-07 08:30 A |  | 100% |  |  |  | start no earlier than 2012-06-07 08:00 | Tin Nguyen | 0.5h | 0.5h |
| 56 | 1.2.3.2.2.4 | Define & analysis problems |  | 0.12d? | 2012-06-07 08:00 A | 2012-06-07 09:00 A | 53, 54, 55 | 100% |  |  |  |  | Tin Nguyen | 1h | 1h |
| 57 | 1.2.3.3 | **Indentify solution Requirement** |  | 4d | 2012-06-09 08:00 | 2012-06-12 17:00 |  |  |  |  |  |  |  |  |  |
| 58 | 1.2.3.3.1 | Define High Level Requirement |  | 0.05d? | 2012-06-08 08:00 A | 2012-06-08 08:24 A |  | 100% |  |  |  | start no earlier than 2012-06-09 08:00 | Huyen Le; Son Dang; Tam Do; Tin Nguyen; Van Le | 2h | 2h |
| 59 | 1.2.3.3.2 | Define RBS template Decomposition Structure |  | 0.06d? | 2012-06-11 08:00 A | 2012-06-11 08:30 A |  | 100% |  |  |  | start no earlier than 2012-06-11 08:00 | Van Le | 0.5h | 0.5h |
| 60 | 1.2.3.3.3 | Make Requirement Breakdown Structure (RBS) | manual | 2d | 2012-06-11 08:00 | 2012-06-12 17:00 | 59, 56 |  |  |  |  |  | Tam Do; Toan Dang | 8h |  |
| 61 | 1.2.3.3.4 | Define target list functions improvement and set priority | manual | 0.12d? | 2012-06-12 08:00 | 2012-06-12 09:00 | 60 |  |  |  |  | start no earlier than 2012-06-12 08:00 | Tam Do; Toan Dang | 2h |  |
| 62 | 1.2.4 | Review and update concept of operation |  | 0.75d | 2012-06-13 10:00 | 2012-06-13 17:00 | 51 |  |  | 0d |  | finish no earlier than 2012-06-13 17:00 | Son Dang; Van Le | 12h |  |
| 63 | 1.2.5 | **Make Software Requirement Specifycation (SRS)** |  | 9d | 2012-06-08 08:00 | 2012-06-16 17:00 |  |  |  |  |  |  |  |  |  |
| 64 | 1.2.5.1 | Discuss overview User Interface (UI) |  | 0.1d | 2012-06-08 08:00 A | 2012-06-08 17:00 A |  | 100% |  |  |  | finish no earlier than 2012-06-08 17:00 | Huyen Le; Son Dang; Tam Do; Tin Nguyen; Van Le | 4h | 4h |
| 65 | 1.2.5.2 | Design overview UI |  | 1.88d? | 2012-06-08 08:00 A | 2012-06-13 17:00 |  | 40% | 1.12d? | 0d |  | finish no earlier than 2012-06-13 17:00 | Son Dang; Tam Do | 30h | 12h |
| 66 | 1.2.5.3 | Define template SRS document |  | 1d? | 2012-06-12 08:00 | 2012-06-12 17:00 |  |  |  | 0d |  | start no earlier than 2012-06-12 08:00 | Huyen Le; Toan Dang | 16h |  |
| 67 | 1.2.5.4 | Define Usecase Diagram |  | 0.12d? | 2012-06-13 08:00 | 2012-06-13 09:00 |  |  |  | 0d |  | start no earlier than 2012-06-13 08:00 | Tam Do; Tin Nguyen | 2h |  |
| 68 | 1.2.5.5 | Define Usecase Description |  | 0.38d? | 2012-06-13 08:00 | 2012-06-13 11:00 |  |  |  | 0d |  | start no earlier than 2012-06-13 08:00 | Tam Do; Tin Nguyen | 6h |  |
| 69 | 1.2.5.6 | Review and update Usecase diagram & Usecase discription |  | 2d? | 2012-06-13 08:00 | 2012-06-14 17:00 |  |  |  | 0d |  | finish no earlier than 2012-06-14 17:00 | Son Dang; Van Le | 12h |  |
| 70 | 1.2.5.7 | Complete SRS |  | 0.19d? | 2012-06-14 08:00 | 2012-06-14 09:30 |  |  |  | 0d |  | start no earlier than 2012-06-14 08:00 | Huyen Le; Son Dang | 3h |  |
| 71 | 1.2.6 | Review and update SRS |  | 3d? | 2012-06-14 08:00 | 2012-06-16 17:00 |  |  |  | 0d |  | start no earlier than 2012-06-14 08:00 | Son Dang; Van Le; Tam Do | 72h |  |
| 72 | 1.3 | **Analysis & Design** |  | 1d? | 2012-06-04 08:00 | 2012-06-04 17:00 |  |  |  | 0d | 49d |  |  |  |  |
| 73 | 1.3.1 | Making SDS |  | 1d? | 2012-06-04 08:00 | 2012-06-04 17:00 |  |  |  | 0d | 49d |  |  |  |  |
| 74 | 1.3.2 | Making SAD |  | 1d? | 2012-06-04 08:00 | 2012-06-04 17:00 |  |  |  | 0d | 49d |  |  |  |  |
| 75 | 1.4 | **Development** |  | 1d? | 2012-06-04 08:00 | 2012-06-04 17:00 |  |  |  | 0d | 49d |  |  |  |  |
| 76 | 1.4.1 | Source code |  | 1d? | 2012-06-04 08:00 | 2012-06-04 17:00 |  |  |  | 0d | 49d |  |  |  |  |
| 77 | 1.4.2 | Defect Report |  | 1d? | 2012-06-04 08:00 | 2012-06-04 17:00 |  |  |  | 0d | 49d |  |  |  |  |
| 78 | 1.4.3 | Prototype |  | 1d | 2012-06-04 08:00 | 2012-06-04 17:00 |  |  |  | 0d | 49d |  |  |  |  |

| ID | WBS | Task | Duration | Start | Finish | Total slack | Free slack |
| --- | --- | --- | --- | --- | --- | --- | --- |
| 79 | 1.5 | **Testing** | 1d? | 2012-06-04 08:00 | 2012-06-04 17:00 | 0d | 49d |
| 80 | 1.5.1 | Making test plan | 1d? | 2012-06-04 08:00 | 2012-06-04 17:00 | 0d |  |
| 81 | 1.5.2 | Defect report | 1d? | 2012-06-04 08:00 | 2012-06-04 17:00 | 0d | 49d |
| 82 | 1.6 | **Packing & Deployment** | 1d? | 2012-06-04 08:00 | 2012-06-04 17:00 | 0d | 49d |
| 83 | 1.6.1 | Prototype | 1d | 2012-06-04 08:00 | 2012-06-04 17:00 | 0d | 49d |
| 84 | 1.6.2 | User guide | 1d? | 2012-06-04 08:00 | 2012-06-04 17:00 | 0d | 49d |
